# Test

Schedule from MS Project, 2020-12-01 to 2020-12-24, costs in ¥.

## Calendars

- 标准: Mon-Fri 08:00-12:00, 13:00-17:00; Sat-Sun off. Exceptions (off unless hours are given): 2020-12-05 to 2020-12-06 08:00-12:00, 13:00-17:00, 2020-12-12 to 2020-12-13 08:00-12:00, 13:00-17:00, 2020-12-19 to 2020-12-20 08:00-12:00, 13:00-17:00.

## Resources

| Resource | Rate |
| --- | --- |
| 杜然 | 20 |
| 苗雨 | 15 |
| 周双文 | 15 |
| 间接成本 |  |
| 储备资金 |  |
| v |  |

## Schedule

| ID | WBS | Task | Duration | Start | Finish | Predecessors | Total slack | Free slack | Constraint | Resources | Work | Cost | 储备资金 |
| --- | --- | --- | --- | --- | --- | --- | --- | --- | --- | --- | --- | --- | --- |
| 1 | 1 | **枫叶阅读** | 24d | 2020-12-01 08:00 | 2020-12-24 17:00 |  |  |  |  |  | 940.8h | 15,336 |  |
| 2 | 1.1 | **1学生端** | 24d | 2020-12-01 08:00 | 2020-12-24 17:00 |  |  |  |  |  | 492.8h | 8,596 |  |
| 3 | 1.1.1 | **1.1登录模块** | 3d | 2020-12-01 08:00 | 2020-12-03 17:00 |  | 21d |  |  |  | 24h | 480 | 20 |
| 4 | 1.1.1.1 | 1.1.1登陆页面的界面设计 | 0.5d | 2020-12-01 08:00 | 2020-12-01 12:00 |  | 23.5d |  |  | 杜然 | 4h | 80 |  |
| 5 | 1.1.1.2 | 1.1.2登陆界面的用户数据库设计与创建 | 0.5d | 2020-12-01 08:00 | 2020-12-01 12:00 |  | 21.5d | 0.5d |  | 杜然 | 4h | 80 |  |
| 6 | 1.1.1.3 | 1.1.3登陆界面的用户数据库的创建 | 0.4d | 2020-12-02 08:00 | 2020-12-02 11:12 | 5 | 21d | 0d | start no earlier than 2020-12-02 08:00 | 杜然 | 3.2h | 64 |  |
| 7 | 1.1.1.4 | 1.1.4登录的逻辑设计实现 | 0.3d | 2020-12-02 11:12 | 2020-12-02 14:36 | 6 | 21d | 0d |  | 杜然 | 2.4h | 48 |  |
| 8 | 1.1.1.5 | 1.1.5编写用户登录的提示信息 | 0.3d | 2020-12-02 14:36 | 2020-12-02 17:00 | 7 | 21d | 0d | start no earlier than 2020-12-02 08:00 | 杜然 | 2.4h | 48 |  |
| 9 | 1.1.1.6 | 1.1.6单元测试 | 1d | 2020-12-03 08:00 | 2020-12-03 17:00 | 8 | 21d |  | start no earlier than 2020-12-03 08:00 | 杜然 | 8h | 160 |  |
| 10 | 1.1.2 | **1.2首页信息展示** | 8d | 2020-12-01 08:00 | 2020-12-08 17:00 |  | 16d |  |  |  | 32h | 560 |  |
| 11 | 1.1.2.1 | 1.2.1首页的整体界面设计 | 0.3d | 2020-12-01 08:00 | 2020-12-01 10:24 |  | 21.7d | 3.7d |  | 周双文 | 2.4h | 36 |  |
| 12 | 1.1.2.2 | 1.2.2首页的搜索按钮与分享按钮设计 | 0.4d | 2020-12-01 08:00 | 2020-12-01 11:12 |  | 21.6d | 3.6d |  | 周双文 | 3.2h | 48 |  |
| 13 | 1.1.2.3 | 1.2.3首页的搜索按钮与分享按钮的逻辑实现 | 0.3d | 2020-12-01 08:00 | 2020-12-01 10:24 |  | 21.7d | 3.7d |  | 周双文 | 2.4h | 36 |  |
| 14 | 1.1.2.4 | 1.2.4首页轮播图的界面设计 | 0.5d | 2020-12-05 08:00 | 2020-12-05 12:00 | 11, 12, 13 | 18d | 0d | start no earlier than 2020-12-05 08:00 | 周双文 | 4h | 60 |  |
| 15 | 1.1.2.5 | 1.2.5首页轮播图的逻辑实现 | 0.5d | 2020-12-05 13:00 | 2020-12-05 17:00 | 14 | 18d | 0d |  | 周双文 | 4h | 60 |  |
| 16 | 1.1.2.6 | 1.2.6首页底部分页按钮的逻辑实现 | 1d | 2020-12-06 08:00 | 2020-12-06 17:00 | 15 | 18d |  | start no earlier than 2020-12-06 08:00 |  |  |  |  |
| 17 | 1.1.2.7 | 1.2.7首页的中心部分图书展示页面的设计 | 0.5d | 2020-12-07 08:00 | 2020-12-07 12:00 |  | 16d | 0d | start no earlier than 2020-12-07 08:00 | 杜然 | 4h | 80 |  |
| 18 | 1.1.2.8 | 1.2.8首页对的图书介绍部分的图书展示的逻辑设计 | 0.5d | 2020-12-07 13:00 | 2020-12-07 17:00 | 17 | 16d | 0d |  | 杜然 | 4h | 80 |  |
| 19 | 1.1.2.9 | 1.2.9图书介绍的逻辑实现 | 1d | 2020-12-08 08:00 | 2020-12-08 17:00 | 18 | 16d |  |  | 杜然 | 8h | 160 |  |
| 20 | 1.1.3 | **1.3分类模块** | 17d | 2020-12-01 08:00 | 2020-12-17 17:00 |  | 7d |  |  | 杜然 | 212h | 3,860 |  |
| 21 | 1.1.3.1 | 1.3.1分类界面的界面设计 | 0.5d | 2020-12-01 08:00 | 2020-12-01 12:00 |  | 20d | 0d |  | 周双文 | 4h | 60 |  |
| 22 | 1.1.3.2 | 1.3.2分类界面的底部导航栏的界面设计 | 0.5d | 2020-12-01 13:00 | 2020-12-01 17:00 | 21 | 20d | 0d |  | 周双文 | 4h | 60 |  |
| 23 | 1.1.3.3 | 1.3.3分类界面的底部导航栏的逻辑实现 | 0.5d | 2020-12-02 08:00 | 2020-12-02 12:00 | 22 | 20d | 7.5d |  | 周双文 | 4h | 60 |  |
| 24 | 1.1.3.4 | 1.3.4子分类的界面的页面设计 | 0.5d | 2020-12-10 08:00 | 2020-12-10 12:00 | 23 | 12.5d | 0d | start no earlier than 2020-12-10 08:00 | 周双文 | 4h | 60 |  |
| 25 | 1.1.3.5 | 1.3.5子分类的界面的逻辑实现 | 0.5d | 2020-12-10 13:00 | 2020-12-10 17:00 | 24 | 12.5d | 0d |  | 周双文 | 4h | 60 |  |
| 26 | 1.1.3.6 | 1.3.6图书的详细信息页面的设计 | 0.5d | 2020-12-11 08:00 | 2020-12-11 12:00 | 25 | 12.5d | 0d |  | 周双文 | 4h | 60 |  |
| 27 | 1.1.3.7 | 1.3.7图书的详细信息页面的逻辑实现 | 1d | 2020-12-11 13:00 | 2020-12-12 12:00 | 26 | 12.5d |  |  | 周双文 | 8h | 120 |  |
| 28 | 1.1.3.8 | 1.3.8图书的详细信息页面的底部书籍推荐页面的设计 | 0.5d | 2020-12-12 08:00 | 2020-12-12 12:00 |  | 12.5d |  | start no earlier than 2020-12-12 08:00 | 周双文 | 4h | 60 |  |
| 29 | 1.1.3.9 | 1.3.9图书的阅读页面的逻辑设计 | 1d | 2020-12-13 08:00 | 2020-12-13 17:00 |  | 7d | 0d | start no earlier than 2020-12-13 08:00 | 周双文 | 8h | 120 |  |
| 30 | 1.1.3.10 | 1.3.10图书的阅读界面的界面设计 | 0.5d | 2020-12-14 08:00 | 2020-12-14 12:00 | 29 | 7d | 0d |  | 周双文 | 4h | 60 |  |
| 31 | 1.1.3.11 | 1.3.11图书的阅读界面的逻辑实现 | 1.5d | 2020-12-14 13:00 | 2020-12-15 17:00 | 30 | 7d | 0d |  | 周双文 | 12h | 180 |  |
| 32 | 1.1.3.12 | 1.3.12图书的阅读界面的书签与笔记功能的逻辑实现 | 2d | 2020-12-16 08:00 | 2020-12-17 17:00 | 31 | 7d |  |  | 周双文 | 16h | 240 |  |

| ID | WBS | Task | Duration | Start | Finish | Predecessors | Total slack | Free slack | Constraint | Resources | Work | Cost |
| --- | --- | --- | --- | --- | --- | --- | --- | --- | --- | --- | --- | --- |
| 33 | 1.1.4 | **1.4书架** | 5d | 2020-12-18 08:00 | 2020-12-22 17:00 |  |  |  |  |  | 40h | 600 |
| 34 | 1.1.4.1 | 1.4.1书架界面的总体界面设计 | 0.5d | 2020-12-18 08:00 | 2020-12-18 12:00 |  | 4.5d | 0.5d |  | 周双文 | 4h | 60 |
| 35 | 1.1.4.2 | 1.4.2书本的图标的界面设计 | 0.5d | 2020-12-18 08:00 | 2020-12-18 12:00 |  | 4.5d | 0.5d |  | 周双文 | 4h | 60 |
| 36 | 1.1.4.3 | 1.4.3书架与书本的逻辑实现 | 1d | 2020-12-19 08:00 | 2020-12-19 17:00 | 34, 35 | 4.5d | 0d | finish no earlier than 2020-12-19 17:00 | 周双文 | 8h | 120 |
| 37 | 1.1.4.4 | 1.4.4图书的书架阅读界面的设计 | 0.5d | 2020-12-20 08:00 | 2020-12-20 12:00 | 36 | 4.5d |  | start no earlier than 2020-12-20 08:00 | 周双文 | 4h | 60 |
| 38 | 1.1.4.5 | 1.4.5图书的书架阅读界面的逻辑实现 | 0.5d | 2020-12-20 08:00 | 2020-12-20 12:00 |  | 4.5d |  | start no earlier than 2020-12-20 08:00 | 周双文 | 4h | 60 |
| 39 | 1.1.4.6 | 1.4.6图书的书籍信息的数据库的创建 | 0.5d | 2020-12-21 08:00 | 2020-12-21 12:00 |  | 0.5d | 0d | start no earlier than 2020-12-21 08:00 | 周双文 | 4h | 60 |
| 40 | 1.1.4.7 | 1.4.7图书的书籍信息的数据库的选择逻辑设计 | 0.5d | 2020-12-21 08:00 | 2020-12-21 12:00 |  | 0.5d | 0d | start no earlier than 2020-12-21 08:00 | 周双文 | 4h | 60 |
| 41 | 1.1.4.8 | 1.4.8图书的书籍信息的展示的逻辑实现 | 1d | 2020-12-21 13:00 | 2020-12-22 12:00 | 39, 40 | 0.5d |  |  | 周双文 | 8h | 120 |
| 42 | 1.1.5 | **1.5我的** | 9d | 2020-12-09 08:00 | 2020-12-17 17:00 |  |  |  |  | 周双文 | 136.8h | 2,376 |
| 43 | 1.1.5.1 | **1.5.1我的界面的用户信息界面设计** | 2d | 2020-12-09 08:00 | 2020-12-10 17:00 |  |  |  |  |  | 16h | 320 |
| 44 | 1.1.5.1.1 | 1.5.1.1我的界面的用户信息的逻辑的实现 | 1d | 2020-12-09 08:00 | 2020-12-09 17:00 |  | 0d |  |  | 杜然 | 8h | 160 |
| 45 | 1.1.5.1.2 | 1.5.1.2我的界面的用户信息的数据库的建立 | 0.5d | 2020-12-10 08:00 | 2020-12-10 12:00 | 44 | 0d |  |  | 杜然 | 4h | 80 |
| 46 | 1.1.5.1.3 | 1.5.1.3我的界面的用户信息的数据的处理与显示 | 0.5d | 2020-12-10 13:00 | 2020-12-10 17:00 | 45 | 0d |  |  | 杜然 | 4h | 80 |
| 47 | 1.1.5.2 | **1.5.2我的界面的顶部用户成就的界面设计** | 2d | 2020-12-11 08:00 | 2020-12-12 17:00 |  |  |  |  |  | 16h | 320 |
| 48 | 1.1.5.2.1 | 1.5.2.1我的界面的用户成就的逻辑的设计 | 0.5d | 2020-12-11 08:00 | 2020-12-11 12:00 |  | 0.5d | 0d |  | 杜然 | 4h | 80 |
| 49 | 1.1.5.2.2 | 1.5.2.2我的界面的用户成就的数据库表的编写 | 0.4d | 2020-12-11 13:00 | 2020-12-11 16:12 | 48 | 0.5d | 0d |  | 杜然 | 3.2h | 64 |
| 50 | 1.1.5.2.3 | 1.5.2.3我的界面的用户成就的数据库数据库特定读取与显示的逻辑实现 | 0.6d | 2020-12-11 16:12 | 2020-12-12 12:00 | 49 | 0.5d | 0d |  | 杜然 | 4.8h | 96 |
| 51 | 1.1.5.2.4 | 1.5.2.4我的界面的用户成就的总体逻辑的实现与数据的展示 | 0.5d | 2020-12-12 13:00 | 2020-12-12 17:00 | 48, 49, 50 | 10.5d | 0d | start no earlier than 2020-12-12 08:00 | 杜然 | 4h | 80 |
| 52 | 1.1.5.3 | 1.5.3我的界面的中心部分的数字统计设计 | 0.5d | 2020-12-13 08:00 | 2020-12-13 12:00 | 51 | 10.5d | 0d | start no earlier than 2020-12-13 08:00 | 杜然 | 4h | 80 |
| 53 | 1.1.5.4 | 1.5.4我的界面的底部导航栏的界面设计 | 0.5d | 2020-12-13 13:00 | 2020-12-13 17:00 | 52 | 10.5d | 0d | start no earlier than 2020-12-13 08:00 | 杜然 | 4h | 80 |
| 54 | 1.1.5.5 | 1.5.5我的底部导航栏的逻辑实现 | 0.5d | 2020-12-14 08:00 | 2020-12-14 12:00 | 53 | 10.5d |  | start no earlier than 2020-12-14 08:00 | 杜然 | 4h | 80 |
| 55 | 1.1.5.6 | 1.5.6我的界面的底部小功能按钮的界面设计 | 0.6d | 2020-12-15 08:00 | 2020-12-15 13:48 |  | 7.4d | 0.4d | start no earlier than 2020-12-15 08:00 | 杜然 | 4.8h | 96 |
| 56 | 1.1.5.7 | 1.5.7我的界面的不同按钮的跳转的逻辑的实现 | 2d | 2020-12-16 08:00 | 2020-12-17 17:00 | 55 | 7d |  | start no earlier than 2020-12-16 08:00 | 杜然 | 16h | 320 |

| ID | WBS | Task | Type | Duration | Start | Finish | Predecessors | Total slack | Free slack | Constraint | Resources | Work | Cost | 储备资金 |
| --- | --- | --- | --- | --- | --- | --- | --- | --- | --- | --- | --- | --- | --- | --- |
| 57 | 1.1.6 | **1.6发现** |  | 8d | 2020-12-01 08:00 | 2020-12-08 17:00 |  | 16d |  |  |  | 32h | 480 | 8000 |
| 58 | 1.1.6.1 | 1.6.1发现界面顶部跳转按钮的的界面设计 |  | 0.5d | 2020-12-01 08:00 | 2020-12-01 12:00 |  | 22.4d | 0d |  | 周双文 | 4h | 60 |  |
| 59 | 1.1.6.2 | 1.6.2发现界面的中心部分发言界面设计 |  | 0.5d | 2020-12-01 13:00 | 2020-12-01 17:00 | 58 | 22.4d | 4d |  | 周双文 | 4h | 60 |  |
| 60 | 1.1.6.3 | 1.6.3发现界面的发言功能的逻辑设计 |  | 0.6d | 2020-12-06 08:00 | 2020-12-06 13:48 | 59 | 18.4d |  | start no earlier than 2020-12-06 08:00 | 周双文 | 4.8h | 72 |  |
| 61 | 1.1.6.4 | 1.6.4发言界面的逻辑实现 |  | 0.6d | 2020-12-06 08:00 | 2020-12-06 13:48 |  | 18.4d |  | start no earlier than 2020-12-06 08:00 | 周双文 | 4.8h | 72 |  |
| 62 | 1.1.6.5 | 1.6.5发言界面的顶部按钮的界面逻辑实现 |  | 0.4d | 2020-12-07 08:00 | 2020-12-07 11:12 |  | 17.2d | 0d | start no earlier than 2020-12-07 08:00 | 周双文 | 3.2h | 48 |  |
| 63 | 1.1.6.6 | 1.6.6发言界面的留言功能的数据库的设计 |  | 0.4d | 2020-12-07 11:12 | 2020-12-07 15:24 | 62 | 17.2d |  |  | 周双文 | 3.2h | 48 |  |
| 64 | 1.1.6.7 | 1.6.7发言界面的数据库的选择性查询与实现 |  | 1d | 2020-12-08 08:00 | 2020-12-08 17:00 |  | 16d |  | start no earlier than 2020-12-08 08:00 | 周双文 | 8h | 120 |  |
| 65 | 1.1.7 | 1.7单元测试与文档编写 | manual | 2d | 2020-12-23 08:00 | 2020-12-24 17:00 | 33 |  |  |  | 周双文 | 16h | 240 |  |
| 66 | 1.2 | **2.教师端** |  | 22d | 2020-12-01 08:00 | 2020-12-22 17:00 |  |  |  |  | 周双文 | 448h | 6,740 |  |
| 67 | 1.2.1 | **2.1登录模块** |  | 3d | 2020-12-01 08:00 | 2020-12-03 17:00 |  |  |  |  | 周双文 | 45.6h | 684 |  |
| 68 | 1.2.1.1 | 2.1.1创建登陆页面 |  | 0.3d | 2020-12-01 08:00 | 2020-12-01 10:24 |  | 2.7d |  |  | 周双文 | 2.4h | 36 |  |
| 69 | 1.2.1.2 | 2.1.2构建教师登录数据库 |  | 0.3d | 2020-12-01 08:00 | 2020-12-01 10:24 |  | 2.7d |  |  | 周双文 | 2.4h | 36 |  |
| 70 | 1.2.1.3 | 2.1.3登录的逻辑实现 |  | 0.4d | 2020-12-01 08:00 | 2020-12-01 11:12 |  | 2.6d | 1.2d |  | 周双文 | 3.2h | 48 |  |
| 71 | 1.2.1.4 | 2.1.4编写登陆提示信息 |  | 0.4d | 2020-12-02 13:48 | 2020-12-02 17:00 | 70 | 22d |  | finish no earlier than 2020-12-02 17:00 | 周双文 | 3.2h | 48 |  |
| 72 | 1.2.1.5 | 2.1.5设置登录成功过跳转 |  | 0.3d | 2020-12-02 14:36 | 2020-12-02 17:00 | 70 | 21d | 0d | finish no earlier than 2020-12-02 17:00 | 周双文 | 2.4h | 36 |  |
| 73 | 1.2.1.6 | 2.1.6单元测试 |  | 1d | 2020-12-03 08:00 | 2020-12-03 17:00 | 72 | 21d |  | start no earlier than 2020-12-02 08:00 | 周双文 | 8h | 120 |  |
| 74 | 1.2.2 | **2.2主页展示** |  | 6d | 2020-12-03 08:00 | 2020-12-08 17:00 |  |  |  |  | 周双文 | 106.4h | 1,596 |  |
| 75 | 1.2.2.1 | **2.2.1侧边栏展示** |  | 2d | 2020-12-03 08:00 | 2020-12-04 17:00 |  |  |  |  |  | 16h | 240 |  |
| 76 | 1.2.2.1.1 | 2.2.1.1侧边栏主界面的展示 |  | 0.5d | 2020-12-03 08:00 | 2020-12-03 12:00 |  | 0d |  |  | 苗雨 | 4h | 60 |  |
| 77 | 1.2.2.1.2 | 2.2.1.2侧边栏展示逻辑的实现 |  | 0.5d | 2020-12-03 13:00 | 2020-12-03 17:00 | 76 | 0d |  |  | 苗雨 | 4h | 60 |  |
| 78 | 1.2.2.1.3 | 2.2.1.3侧边栏展示分页面的编写 |  | 0.5d | 2020-12-04 08:00 | 2020-12-04 12:00 | 77 | 0d |  |  | 苗雨 | 4h | 60 |  |
| 79 | 1.2.2.1.4 | 2.2.1.4侧边栏功能的单元测试 |  | 0.5d | 2020-12-04 13:00 | 2020-12-04 17:00 | 78 | 0d |  |  | 苗雨 | 4h | 60 |  |
| 80 | 1.2.2.2 | **2.2.2顶部导航栏实现** |  | 2d | 2020-12-05 08:00 | 2020-12-06 17:00 | 75 |  |  |  |  | 26.4h | 396 |  |
| 81 | 1.2.2.2.1 | 2.2.2.1顶部导航栏界面设计 |  | 0.3d | 2020-12-05 08:00 | 2020-12-05 10:24 |  | 1.7d |  |  | 苗雨 | 2.4h | 36 |  |
| 82 | 1.2.2.2.2 | 2.2.2.2顶部导航栏界面的展示 |  | 0.3d | 2020-12-05 08:00 | 2020-12-05 10:24 |  | 0d |  |  | 苗雨 | 2.4h | 36 |  |
| 83 | 1.2.2.2.3 | 2.2.2.3顶部导航栏界面的功能实现 |  | 1d | 2020-12-05 10:24 | 2020-12-06 10:24 | 82 | 0.7d |  |  | 苗雨 | 8h | 120 |  |
| 84 | 1.2.2.2.4 | 2.2.2.4快捷方式按钮的功能实现 |  | 1d | 2020-12-05 10:24 | 2020-12-06 10:24 | 82 | 0d |  |  | 苗雨 | 8h | 120 |  |
| 85 | 1.2.2.2.5 | 2.2.2.5用户退出界面的设计 |  | 0.7d | 2020-12-06 10:24 | 2020-12-06 17:00 | 84 | 0d |  |  | 苗雨 | 5.6h | 84 |  |

| ID | WBS | Task | Duration | Start | Finish | Predecessors | Total slack | Constraint | Resources | Work | Cost |
| --- | --- | --- | --- | --- | --- | --- | --- | --- | --- | --- | --- |
| 86 | 1.2.2.3 | **2.2.3中心部分信息页面展示** | 2d | 2020-12-07 08:00 | 2020-12-08 17:00 | 80 |  |  |  | 16h | 240 |
| 87 | 1.2.2.3.1 | 2.2.3.1列表的页面设计 | 0.5d | 2020-12-07 08:00 | 2020-12-07 12:00 |  | 0d | start no earlier than 2020-12-07 08:00 | 苗雨 | 4h | 60 |
| 88 | 1.2.2.3.2 | 2.2.3.2列表的页面实现 | 0.5d | 2020-12-07 13:00 | 2020-12-07 17:00 | 87 | 0d | start no earlier than 2020-12-06 08:00 | 苗雨 | 4h | 60 |
| 89 | 1.2.2.3.3 | 2.2.3.3折线图控件的引用 | 0.5d | 2020-12-08 08:00 | 2020-12-08 12:00 | 88 | 0d |  | 苗雨 | 4h | 60 |
| 90 | 1.2.2.3.4 | 2.2.3.4折线图页面的逻辑实现 | 0.3d | 2020-12-08 13:00 | 2020-12-08 15:24 | 89 | 0d |  | 苗雨 | 2.4h | 36 |
| 91 | 1.2.2.3.5 | 2.2.3.5不同分页在主页的兼容性展示 | 0.2d | 2020-12-08 15:24 | 2020-12-08 17:00 | 90 | 0d |  | 苗雨 | 1.6h | 24 |
| 92 | 1.2.3 | **2.3图书管理** | 4d | 2020-12-09 08:00 | 2020-12-12 17:00 | 74 |  |  |  | 32h | 480 |
| 93 | 1.2.3.1 | 2.3.1图书信息列表页面设计 | 0.5d | 2020-12-09 08:00 | 2020-12-09 12:00 |  | 0d |  | 苗雨 | 4h | 60 |
| 94 | 1.2.3.2 | 2.3.2图书信息页面逻辑实现 | 0.5d | 2020-12-09 13:00 | 2020-12-09 17:00 | 93 | 0d |  | 苗雨 | 4h | 60 |
| 95 | 1.2.3.3 | 2.3.3图书增加页面设计 | 0.5d | 2020-12-10 08:00 | 2020-12-10 12:00 | 94 | 0d |  | 苗雨 | 4h | 60 |
| 96 | 1.2.3.4 | 2.3.4图书增加图书页面的逻辑实现 | 0.5d | 2020-12-10 13:00 | 2020-12-10 17:00 | 95 | 0d |  | 苗雨 | 4h | 60 |
| 97 | 1.2.3.5 | 2.3.5图书修改页面的逻辑实现 | 1d | 2020-12-11 08:00 | 2020-12-11 17:00 | 96 | 0d |  | 苗雨 | 8h | 120 |
| 98 | 1.2.3.6 | 2.3.6图书删除的页面设计与逻辑实现 | 1d | 2020-12-12 08:00 | 2020-12-12 17:00 | 97 | 0d |  | 苗雨 | 8h | 120 |
| 99 | 1.2.4 | **2.4学生管理** | 4d | 2020-12-13 08:00 | 2020-12-16 17:00 | 74 |  |  |  | 32h | 480 |
| 100 | 1.2.4.1 | 2.4.1学生信息列表的设计 | 0.5d | 2020-12-13 08:00 | 2020-12-13 12:00 |  | 0d |  | 苗雨 | 4h | 60 |
| 101 | 1.2.4.2 | 2.4.2学生信息展示列表的逻辑实现 | 0.5d | 2020-12-13 13:00 | 2020-12-13 17:00 | 100 | 0d |  | 苗雨 | 4h | 60 |
| 102 | 1.2.4.3 | 2.4.3学生信息修改页面的设计 | 0.5d | 2020-12-14 08:00 | 2020-12-14 12:00 | 101 | 0d |  | 苗雨 | 4h | 60 |
| 103 | 1.2.4.4 | 2.4.4学生信息修改页面的逻辑实现 | 0.5d | 2020-12-14 13:00 | 2020-12-14 17:00 | 102 | 0d |  | 苗雨 | 4h | 60 |
| 104 | 1.2.4.5 | 2.4.5增加学生信息页面的设计 | 0.5d | 2020-12-15 08:00 | 2020-12-15 12:00 | 103 | 0d |  | 苗雨 | 4h | 60 |
| 105 | 1.2.4.6 | 2.4.6增加学生信息逻辑的实现 | 0.5d | 2020-12-15 13:00 | 2020-12-15 17:00 | 104 | 0d |  | 苗雨 | 4h | 60 |
| 106 | 1.2.4.7 | 2.4.7删除学生信息页面的设计 | 0.5d | 2020-12-16 08:00 | 2020-12-16 12:00 | 105 | 0d |  | 苗雨 | 4h | 60 |
| 107 | 1.2.4.8 | 2.4.8删除学生信息页面的逻辑实现 | 0.5d | 2020-12-16 13:00 | 2020-12-16 17:00 | 106 | 0d |  | 苗雨 | 4h | 60 |
| 108 | 1.2.5 | **2.5留言管理** | 1d | 2020-12-17 08:00 | 2020-12-17 17:00 | 74 |  |  |  | 8h | 140 |
| 109 | 1.2.5.1 | 2.5.1删除学生留言界面的设计 | 0.5d | 2020-12-17 08:00 | 2020-12-17 12:00 |  | 0d |  | 杜然 | 4h | 80 |
| 110 | 1.2.5.2 | 2.5.2删除学生留言界的逻辑实现 | 0.5d | 2020-12-17 13:00 | 2020-12-17 17:00 | 109 | 0d |  | 苗雨 | 4h | 60 |

| ID | WBS | Task | Type | Duration | Start | Finish | Predecessors | Total slack | Resources | Work | Cost |
| --- | --- | --- | --- | --- | --- | --- | --- | --- | --- | --- | --- |
| 111 | 1.2.6 | **2.6发现管理** |  | 1d | 2020-12-17 08:00 | 2020-12-17 17:00 | 74 |  |  | 8h | 120 |
| 112 | 1.2.6.1 | 2.5.1删除学生发现界面的设计 |  | 0.5d | 2020-12-17 08:00 | 2020-12-17 12:00 |  | 0d | 苗雨 | 4h | 60 |
| 113 | 1.2.6.2 | 2.5.2删除学生发现界的逻辑实现 |  | 0.5d | 2020-12-17 13:00 | 2020-12-17 17:00 | 112 | 0d | 苗雨 | 4h | 60 |
| 114 | 1.2.7 | **2.7登出管理** |  | 1d | 2020-12-18 08:00 | 2020-12-18 17:00 | 74 |  |  | 8h | 120 |
| 115 | 1.2.7.1 | 2.7.1设计教师的登出页面效果 |  | 0.5d | 2020-12-18 08:00 | 2020-12-18 12:00 |  | 0d | 苗雨 | 4h | 60 |
| 116 | 1.2.7.2 | 2.7.2设计教师的登出页面逻辑的实现 |  | 0.5d | 2020-12-18 13:00 | 2020-12-18 17:00 | 115 | 0d | 苗雨 | 4h | 60 |
| 117 | 1.2.8 | **2.8页面整合** |  | 1d | 2020-12-19 08:00 | 2020-12-19 17:00 | 114, 108, 111 |  |  | 8h | 120 |
| 118 | 1.2.8.1 | 2.8.1子页面与侧边栏一一对应展示 |  | 1d | 2020-12-19 08:00 | 2020-12-19 17:00 | 108, 111, 114 | 0d | 苗雨 | 8h | 120 |
| 119 | 1.2.9 | 2.9单元测试与文档编写 | manual | 3d | 2020-12-20 08:00 | 2020-12-22 17:00 | 117 |  | 苗雨 | 24h | 360 |
